# AURA PROJECT

How a schedule from ProjectLibre changed from version to version. A marks actual dates.

## Version 1 (saved 2025-10-23)

| ID | WBS | Task | Duration | Start | Finish | Predecessors | Constraint |
| --- | --- | --- | --- | --- | --- | --- | --- |
| 1 | 1 | **Actividades: AURA PROJECT** | 48.12d | 2025-10-24 | 2025-12-31 |  |  |
| 2 | 1.1 | **FASE 1** | 5d | 2025-10-24 | 2025-10-30 |  |  |
| 3 |  | 1. Kickoff y planificación | 2d | 2025-10-24 | 2025-10-27 |  |  |
| 4 |  | 1.2. Radiografía de datos (AS-IS) | 3d | 2025-10-28 | 2025-10-30 | 3 | start no earlier than 2025-10-27 |
| 5 |  | 1.3 Shortlist técnico (infraestructura LLM) | 2d | 2025-10-28 | 2025-10-29 | 4SS | start no earlier than 2025-10-27 |
| 6 | 1.2 | **FASE 2** | 7d | 2025-10-30 | 2025-11-10 |  | start no earlier than 2025-10-30 |
| 7 |  | 2.1 Gap Analysis + Modelo TO-BE | 4d | 2025-10-30 | 2025-11-05 |  |  |
| 8 |  | 2.2. Diseño de encuesta psicológica y satisfacción | 3d | 2025-11-05 | 2025-11-10 | 7 | start no earlier than 2025-11-05 |
| 9 |  | 2.3. Definición de variables del algoritmo (motivos, edad, perfil, comportamiento) | 3d | 2025-11-05 | 2025-11-10 | 8SS | start no earlier than 2025-11-05 |
| 10 | 1.3 | **FASE 3** | 7d | 2025-11-10 | 2025-11-19 |  | start no earlier than 2025-11-10 |
| 11 |  | 3. Desarrollo prototipo Alpha | 5d | 2025-11-10 | 2025-11-17 |  |  |
| 12 |  | 3.1. Evaluación A/B plan | 2d | 2025-11-17 | 2025-11-19 | 11 | start no earlier than 2025-11-17 |
| 13 | 1.4 | **FASE 4** | 17d | 2025-11-19 | 2025-12-12 |  | start no earlier than 2025-11-19 |
| 14 |  | 4.1 Piloto Beta (2 mercados) | 10d | 2025-11-19 | 2025-12-03 |  |  |
| 15 |  | 4.2. Análisis de resultados del piloto | 4d | 2025-12-03 | 2025-12-09 | 14 | start no earlier than 2025-12-03 |
| 16 |  | 4.3. Ajuste del algoritmo predictivo | 3d | 2025-12-09 | 2025-12-12 | 15 | start no earlier than 2025-12-09 |
| 17 | 1.5 | **FASE 5** | 9d | 2025-12-15 | 2025-12-26 |  | start no earlier than 2025-12-15 |
| 18 |  | 5.1 Caso de negocio y roadmap | 4d | 2025-12-15 | 2025-12-19 |  |  |
| 19 |  | 5.2. Validación ejecutiva Go/No-Go | 1d | 2025-12-19 | 2025-12-22 | 18 | start no earlier than 2025-12-19 |
| 20 |  | 5.3. Ajustes finales y documentación técnica | 4d | 2025-12-22 | 2025-12-26 | 19 | start no earlier than 2025-12-22 |
| 21 | 1.6 | **FASE FINAL** | 2d | 2025-12-29 | 2025-12-31 |  | start no earlier than 2025-12-24 |
| 22 |  | 6. Cierre y entrega final de documentación | 2d | 2025-12-29 | 2025-12-31 |  | start no earlier than 2025-12-29 |

## Version 2 (saved 2025-10-23)

Note of the change: ProjectLibre de la propuesta. Cronograma de act

Last finish 2025-12-31 → 2025-10-24 (-68d).

Changed:

| ID | Task | Start | Finish | Duration | Other |
| --- | --- | --- | --- | --- | --- |
| 1 | **Actividades: AURA PROJECT** | 2025-10-24 → 2025-09-19 (-35d) | 2025-12-31 → 2025-10-24 (-68d) | 48.12d → 26d | constraint none → start no later than 2025-09-19 |
| 2 | **FASE 1** | 2025-10-24 → 2025-09-19 (-35d) | 2025-10-30 → 2025-09-23 (-37d) | 5d → 3d | constraint none → start no later than 2025-09-19 |
| 3 | 1.1 Kickoff y planificación | 2025-10-24 → 2025-09-19 (-35d) | 2025-10-27 → 2025-09-19 (-38d) | 2d → 1d | was named 1. Kickoff y planificación |
| 4 | 1.2. Radiografía de datos (AS-IS) | 2025-10-28 → 2025-09-22 (-36d) | 2025-10-30 → 2025-09-23 (-37d) | 3d → 2d | constraint start no earlier than 2025-10-27 → start no earlier than 2025-09-22 |
| 5 | 1.3 Shortlist técnico (infraestructura LLM) | 2025-10-28 → 2025-09-22 (-36d) | 2025-10-29 → 2025-09-23 (-36d) |  | constraint start no earlier than 2025-10-27 → start no earlier than 2025-09-22 |
| 6 | **FASE 2** | 2025-10-30 → 2025-09-24 (-36d) | 2025-11-10 → 2025-09-29 (-42d) | 7d → 4d | constraint start no earlier than 2025-10-30 → start no earlier than 2025-09-24 |
| 7 | 2.1 Gap Analysis + Modelo TO-BE | 2025-10-30 → 2025-09-24 (-36d) | 2025-11-05 → 2025-09-25 (-41d) | 4d → 2d |  |
| 8 | 2.2. Diseño de encuesta psicológica y satisfacción | 2025-11-05 → 2025-09-26 (-40d) | 2025-11-10 → 2025-09-29 (-42d) | 3d → 2d | constraint start no earlier than 2025-11-05 → start no earlier than 2025-09-25 |
| 9 | 2.3. Definición de variables del algoritmo (motivos, edad, perfil, comportamiento) | 2025-11-05 → 2025-09-26 (-40d) | 2025-11-10 → 2025-09-29 (-42d) | 3d → 2d | constraint start no earlier than 2025-11-05 → start no earlier than 2025-09-26 |
| 10 | **FASE 3** | 2025-11-10 → 2025-09-29 (-42d) | 2025-11-19 → 2025-10-02 (-48d) | 7d → 4d | constraint start no earlier than 2025-11-10 → start no earlier than 2025-09-29 |
| 11 | 3.1 Desarrollo prototipo Alpha | 2025-11-10 → 2025-09-29 (-42d) | 2025-11-17 → 2025-10-01 (-47d) | 5d → 3d | was named 3. Desarrollo prototipo Alpha; constraint none → start no earlier than 2025-09-29 |
| 12 | 3.2. Evaluación A/B plan | 2025-11-17 → 2025-10-02 (-46d) | 2025-11-19 → 2025-10-02 (-48d) | 2d → 1d | was named 3.1. Evaluación A/B plan; constraint start no earlier than 2025-11-17 → start no earlier than 2025-10-01 |
| 13 | **FASE 4** | 2025-11-19 → 2025-10-03 (-47d) | 2025-12-12 → 2025-10-15 (-58d) | 17d → 9d | constraint start no earlier than 2025-11-19 → start no earlier than 2025-10-03 |
| 14 | 4.1 Piloto Beta (2 mercados) | 2025-11-19 → 2025-10-03 (-47d) | 2025-12-03 → 2025-10-09 (-55d) | 10d → 5d | constraint none → start no earlier than 2025-10-02 |
| 15 | 4.2. Análisis de resultados del piloto | 2025-12-03 → 2025-10-10 (-54d) | 2025-12-09 → 2025-10-13 (-57d) | 4d → 2d | constraint start no earlier than 2025-12-03 → start no earlier than 2025-10-09 |
| 16 | 4.3. Ajuste del algoritmo predictivo | 2025-12-09 → 2025-10-14 (-56d) | 2025-12-12 → 2025-10-15 (-58d) | 3d → 2d | constraint start no earlier than 2025-12-09 → start no earlier than 2025-10-10 |
| 17 | **FASE 5** | 2025-12-15 → 2025-10-15 (-61d) | 2025-12-26 → 2025-10-22 (-65d) | 9d → 6d | constraint start no earlier than 2025-12-15 → start no earlier than 2025-10-15 |
| 18 | 5.1 Caso de negocio y roadmap | 2025-12-15 → 2025-10-15 (-61d) | 2025-12-19 → 2025-10-16 (-64d) | 4d → 2d |  |
| 19 | 5.2. Validación ejecutiva Go/No-Go | 2025-12-19 → 2025-10-17 (-63d) | 2025-12-22 → 2025-10-20 (-63d) | 1d → 2d | constraint start no earlier than 2025-12-19 → start no earlier than 2025-10-15 |
| 20 | 5.3. Ajustes finales y documentación técnica | 2025-12-22 → 2025-10-21 (-62d) | 2025-12-26 → 2025-10-22 (-65d) | 4d → 2d | constraint start no earlier than 2025-12-22 → start no earlier than 2025-10-17 |
| 21 | **FASE FINAL** | 2025-12-29 → 2025-10-23 (-67d) | 2025-12-31 → 2025-10-24 (-68d) |  | constraint start no earlier than 2025-12-24 → start no earlier than 2025-10-23 |
| 22 | 6. Cierre y entrega final de documentación | 2025-12-29 → 2025-10-23 (-67d) | 2025-12-31 → 2025-10-24 (-68d) |  | constraint start no earlier than 2025-12-29 → start no earlier than 2025-10-22 |
